# National Health Campaign

Schedule from MS Project, 2023-03-02 to 2023-04-21, costs in €, A marks actual dates.
Research Programme
ABC Research Ltd.

## Calendars

- Standard: Mon-Fri 08:00-12:00, 13:00-17:00; Sat-Sun off.

## Resources

| Resource | Group | Rate |
| --- | --- | --- |
| Joanne Kelly | Management | 19.23 |
| Riona Carr | Executive | 6.25 |
| Mary Breen | Management | 19.23 |
| Tom Joyce | Office Staff | 6.88 |
| Conf Room | Facilities |  |
| Junior Staff | Office Staff | 3.75 |
| Printing | External |  |

## Schedule

| ID | WBS | Task | Type | Duration | Start | Finish | Predecessors | Complete | Remaining | Baseline start | Baseline finish | Baseline duration | Total slack | Free slack | Constraint | Resources | Work | Actual work | Cost | Baseline cost | Actual cost |
| --- | --- | --- | --- | --- | --- | --- | --- | --- | --- | --- | --- | --- | --- | --- | --- | --- | --- | --- | --- | --- | --- |
| 1 | 1 | **National Health** |  | 37d? | 2023-03-02 A | 2023-04-21 |  | 6% | 34.66d? | 2023-03-02 | 2023-04-20 | 36d? | 0d |  |  |  | 424h | 24h | 3,926.73 | 2,949.23 | 337.69 |
| 2 | 1.1 | **Survey Setup** |  | 9d | 2023-03-02 A | 2023-03-14 |  | 25% | 6.75d | 2023-03-02 | 2023-03-13 | 8d | 28d |  |  |  | 96h | 24h | 517.69 | 487.69 | 337.69 |
| 3 | 1.1.1 | **Planning** |  | 9d | 2023-03-02 A | 2023-03-14 |  | 25% | 6.75d | 2023-03-02 | 2023-03-13 | 8d | 28d |  |  |  | 96h | 24h | 517.69 | 487.69 | 337.69 |
| 4 | 1.1.1.1 | Design Questionnaire |  | 2d | 2023-03-02 A | 2023-03-03 A |  | 100% |  | 2023-03-02 | 2023-03-03 | 2d |  |  |  | Joanne Kelly | 16h | 16h | 307.69 | 307.69 | 307.69 |
| 5 | 1.1.1.2 | Type Questionnaire |  | 2d | 2023-03-06 A | 2023-03-07 | 4 | 50% | 1d | 2023-03-06 | 2023-03-06 | 1d | 0d |  | finish no earlier than 2023-03-07 | Junior Staff | 16h | 8h | 60 | 30 | 30 |
| 6 | 1.1.1.3 | Print Questionnaire |  | 1w | 2023-03-08 | 2023-03-14 | 5 |  |  | 2023-03-07 | 2023-03-13 | 1w | 0d |  |  | Printing | 40h |  |  |  |  |
| 7 | 1.1.1.4 | Invite Interviewers to Briefing Meeting |  | 3d | 2023-03-08 | 2023-03-10 | 6SS |  |  | 2023-03-07 | 2023-03-09 | 3d | 30d | 0d |  | Riona Carr | 24h |  | 150 | 150 |  |
| 8 | 1.1.1.5 | Survey Planning Complete | milestone | 0d | 2023-03-10 | 2023-03-10 | 4, 7 |  |  | 2023-03-09 | 2023-03-09 | 0d | 30d |  |  | Printing |  |  |  |  |  |
| 9 | 1.2 | **Briefing Setup** |  | 9.5d | 2023-03-15 | 2023-03-28 |  |  |  | 2023-03-14 | 2023-03-27 | 9.5d | 0d |  |  |  | 84h |  | 472.5 |  |  |
| 10 | 1.2.1 | Book Conference Room for Briefing Meeting |  | 4h | 2023-03-15 | 2023-03-15 | 6 |  |  | 2023-03-14 | 2023-03-14 | 4h | 0d |  |  | Tom Joyce | 4h |  | 27.5 |  |  |
| 11 | 1.2.2 | Contact Interviewing Locations |  | 2d | 2023-03-15 | 2023-03-16 | 10SS |  |  | 2023-03-14 | 2023-03-15 | 2d | 0d |  |  | Tom Joyce | 16h |  | 110 |  |  |
| 12 | 1.2.3 | Prepare Rosters |  | 4d | 2023-03-17 | 2023-03-22 | 11 |  |  | 2023-03-16 | 2023-03-21 | 4d | 0d |  |  | Tom Joyce | 32h |  | 220 |  |  |
| 13 | 1.2.4 | Prepare Packs for each Interviewer |  | 3d | 2023-03-23 | 2023-03-27 | 12 |  |  | 2023-03-22 | 2023-03-24 | 3d | 0d |  |  | Junior Staff | 24h |  | 90 |  |  |
| 14 | 1.2.5 | Briefing Meeting with Interviewers |  | 4h | 2023-03-28 | 2023-03-28 | 13 |  |  | 2023-03-27 | 2023-03-27 | 4h | 0d |  |  | Conf Room; Riona Carr | 8h |  | 25 |  |  |
| 15 | 1.2.6 | Interviewers Briefing Complete | milestone | 0d | 2023-03-28 | 2023-03-28 | 14 |  |  | 2023-03-27 | 2023-03-27 | 0d | 0d |  |  | Riona Carr |  |  |  |  |  |
| 16 | 1.3 | **Data Processing** |  | 10.5d? | 2023-03-28 | 2023-04-11 | 15 |  |  | 2023-03-27 | 2023-04-10 | 10.5d? | 0d |  |  |  | 116h |  | 475 |  |  |
| 17 | 1.3.1 | Prepare Book-in forms |  | 2d | 2023-03-28 | 2023-03-30 |  |  |  | 2023-03-27 | 2023-03-29 | 2d | 3.5d | 0d |  | Riona Carr | 16h |  | 100 |  |  |
| 18 | 1.3.2 | Check questionnaires |  | 2d | 2023-03-30 | 2023-04-03 | 17 |  |  | 2023-03-29 | 2023-03-31 | 2d | 3.5d |  |  | Junior Staff | 16h |  | 60 |  |  |
| 19 | 1.3.3 | Code Questionnaires |  | 1.5w | 2023-03-28 | 2023-04-06 | 18FF |  |  | 2023-03-27 | 2023-04-05 | 1.5w | 0d |  |  | Junior Staff | 60h |  | 225 |  |  |
| 20 | 1.3.4 | Input data in computer |  | 3d | 2023-04-04 | 2023-04-06 | 19FS-3d |  |  | 2023-04-03 | 2023-04-05 | 3d | 0d |  |  | Junior Staff | 24h |  | 90 |  |  |
| 21 | 1.3.5 | Analyse the Data |  | 2d | 2023-04-07 | 2023-04-10 | 20 |  |  | 2023-04-06 | 2023-04-07 | 2d | 0d |  |  |  |  |  |  |  |  |
| 22 | 1.3.6 | Data Processing Complete |  | 1d? | 2023-04-11 | 2023-04-11 | 21 |  |  | 2023-04-10 | 2023-04-10 | 1d? | 0d |  |  |  |  |  |  |  |  |
| 23 | 1.4 | **Interpretation** |  | 8d | 2023-04-12 | 2023-04-21 | 22 |  |  | 2023-04-11 | 2023-04-20 | 8d | 0d |  |  |  | 128h |  | 2,461.54 | 2,461.54 |  |
| 24 | 1.4.1 | Prepare Presentation |  | 3d | 2023-04-12 | 2023-04-14 |  |  |  | 2023-04-11 | 2023-04-13 | 3d | 0d |  |  | Joanne Kelly; Mary Breen | 48h |  | 923.08 | 923.08 |  |
| 25 | 1.4.2 | Prepare Research Report |  | 1w | 2023-04-17 | 2023-04-21 | 24 |  |  | 2023-04-14 | 2023-04-20 | 1w | 0d |  |  | Mary Breen; Joanne Kelly | 80h |  | 1,538.46 | 1,538.46 |  |
| 26 | 1.4.3 | Project Complete | milestone | 0d | 2023-04-21 | 2023-04-21 | 25 |  |  | 2023-04-20 | 2023-04-20 | 0d | 0d |  |  |  |  |  |  |  |  |
